# Startup Business Plan

Schedule from MS Project, 2020-08-03 to 2021-01-21.

## Calendars

- Standard: Mon-Fri 08:00-12:00, 13:00-17:00; Sat-Sun off.

## Resources

| Resource |
| --- |
| Manager |
| Business Advisor |
| Owners |
| Peers |
| Accountant |
| Lawyer |
| Banker |
| Government Agency |
| Information Services |

## Schedule

| ID | WBS | Task | Type | Duration | Start | Finish | Predecessors | Total slack | Free slack | Resources | Work |
| --- | --- | --- | --- | --- | --- | --- | --- | --- | --- | --- | --- |
| 1 | 1 | **Phase 1 - Strategic Plan** |  | 23d | 2020-08-03 | 2020-09-02 |  | 0d |  |  | 240h |
| 2 | 1.1 | **Self-Assessment** |  | 3d | 2020-08-03 | 2020-08-05 |  | 0d |  |  | 32h |
| 3 | 1.1.1 | Define business vision |  | 1d | 2020-08-03 | 2020-08-03 |  | 0d |  | Manager | 8h |
| 4 | 1.1.2 | Identify available skills, information and support |  | 1d | 2020-08-04 | 2020-08-04 | 3 | 0d |  | Business Advisor; Manager | 16h |
| 5 | 1.1.3 | Decide whether to proceed |  | 1d | 2020-08-05 | 2020-08-05 | 4 | 0d |  | Manager | 8h |
| 6 | 1.2 | **Define the Opportunity** |  | 10d | 2020-08-06 | 2020-08-19 |  | 0d |  |  | 96h |
| 7 | 1.2.1 | Research the market and competition |  | 1d | 2020-08-06 | 2020-08-06 | 5 | 0d |  | Business Advisor | 8h |
| 8 | 1.2.2 | Interview owners of similar businesses |  | 5d | 2020-08-07 | 2020-08-13 | 7 | 0d |  | Owners | 40h |
| 9 | 1.2.3 | Identify needed resources |  | 2d | 2020-08-14 | 2020-08-17 | 8 | 0d |  | Business Advisor; Peers | 32h |
| 10 | 1.2.4 | Identify operating cost elements |  | 2d | 2020-08-18 | 2020-08-19 | 9 | 0d |  | Accountant | 16h |
| 11 | 1.3 | **Evaluate Business Approach** |  | 4d | 2020-08-20 | 2020-08-25 |  | 0d |  |  | 32h |
| 12 | 1.3.1 | Define new entity requirements |  | 1d | 2020-08-20 | 2020-08-20 | 10 | 0d |  | Manager | 8h |
| 13 | 1.3.2 | Identify on-going business purchase opportunities |  | 1d | 2020-08-21 | 2020-08-21 | 12 | 0d |  | Manager | 8h |
| 14 | 1.3.3 | Research franchise possibilities |  | 1d | 2020-08-24 | 2020-08-24 | 13 | 0d |  | Manager | 8h |
| 15 | 1.3.4 | Summarize business approach |  | 1d | 2020-08-25 | 2020-08-25 | 14 | 0d |  | Manager | 8h |
| 16 | 1.4 | **Evaluate Potential Risks and Rewards** |  | 7d | 2020-08-21 | 2020-08-31 |  | 3d | 0d |  | 80h |
| 17 | 1.4.1 | Assess market size and stability |  | 2d | 2020-08-21 | 2020-08-24 | 12 | 104d | 0d | Business Advisor | 16h |
| 18 | 1.4.2 | Estimate the competition |  | 1d | 2020-08-25 | 2020-08-25 | 17 | 104d | 0d | Business Advisor | 8h |
| 19 | 1.4.3 | Assess needed resource availability |  | 2d | 2020-08-26 | 2020-08-27 | 18 | 104d | 0d | Business Advisor | 16h |
| 20 | 1.4.4 | Evaluate realistic initial market share |  | 1d | 2020-08-28 | 2020-08-28 | 19 | 104d | 0d | Business Advisor | 8h |
| 21 | 1.4.5 | Determine financial requirements |  | 2d | 2020-08-26 | 2020-08-27 | 15 | 0d |  | Business Advisor | 16h |
| 22 | 1.4.6 | Review personal suitability |  | 1d | 2020-08-28 | 2020-08-28 | 21 | 0d |  | Manager | 8h |
| 23 | 1.4.7 | Evaluate initial profitability |  | 1d | 2020-08-31 | 2020-08-31 | 22 | 0d |  | Manager | 8h |
| 24 | 1.5 | Review and modify the strategic plan |  | 2d | 2020-09-01 | 2020-09-02 | 23 | 0d |  |  |  |
| 25 | 1.6 | Confirm decision to proceed | milestone | 0d | 2020-09-02 | 2020-09-02 | 24 | 0d |  |  |  |

| ID | WBS | Task | Type | Duration | Start | Finish | Predecessors | Total slack | Resources | Work |
| --- | --- | --- | --- | --- | --- | --- | --- | --- | --- | --- |
| 26 | 2 | **Phase 2 - Define the Business Opportunity** |  | 27d | 2020-09-03 | 2020-10-09 |  | 0d |  | 208h |
| 27 | 2.1 | **Define the Market** |  | 13d | 2020-09-03 | 2020-09-21 |  | 0d |  | 104h |
| 28 | 2.1.1 | Access available information |  | 1d | 2020-09-03 | 2020-09-03 | 25 | 0d | Business Advisor | 8h |
| 29 | 2.1.2 | Create market analysis plan |  | 2d | 2020-09-04 | 2020-09-07 | 28 | 0d | Business Advisor | 16h |
| 30 | 2.1.3 | Implement market analysis plan |  | 5d | 2020-09-08 | 2020-09-14 | 29 | 0d | Business Advisor | 40h |
| 31 | 2.1.4 | Identify competition |  | 2d | 2020-09-15 | 2020-09-16 | 30 | 0d | Business Advisor | 16h |
| 32 | 2.1.5 | Summarize the market |  | 2d | 2020-09-17 | 2020-09-18 | 31 | 0d | Business Advisor | 16h |
| 33 | 2.1.6 | Identify target market niche |  | 1d | 2020-09-21 | 2020-09-21 | 32 | 0d | Business Advisor | 8h |
| 34 | 2.2 | **Identify Needed Materials and Supplies** |  | 7d | 2020-09-22 | 2020-09-30 |  | 0d |  | 56h |
| 35 | 2.2.1 | "Select a business approach (from ""Evaluate Business Approach"" above)" |  | 2d | 2020-09-22 | 2020-09-23 | 28SS, 33 | 0d | Manager | 16h |
| 36 | 2.2.2 | Identify management staff resources |  | 1d | 2020-09-24 | 2020-09-24 | 35 | 0d | Manager | 8h |
| 37 | 2.2.3 | Identify staffing requirements |  | 1d | 2020-09-25 | 2020-09-25 | 36 | 0d | Manager | 8h |
| 38 | 2.2.4 | Identify needed raw materials |  | 1d | 2020-09-28 | 2020-09-28 | 37 | 0d | Manager | 8h |
| 39 | 2.2.5 | Identify needed utilities |  | 1d | 2020-09-29 | 2020-09-29 | 38 | 0d | Manager | 8h |
| 40 | 2.2.6 | Summarize operating expenses and financial projections |  | 1d | 2020-09-30 | 2020-09-30 | 39 | 0d | Manager | 8h |
| 41 | 2.3 | **Evaluate Potential Risks and Rewards** |  | 6d | 2020-10-01 | 2020-10-08 |  | 0d |  | 48h |
| 42 | 2.3.1 | Assess market size and stability |  | 2d | 2020-10-01 | 2020-10-02 | 40 | 0d | Manager | 16h |
| 43 | 2.3.2 | Assess needed resources availability |  | 2d | 2020-10-05 | 2020-10-06 | 42 | 0d | Manager | 16h |
| 44 | 2.3.3 | Forecast financial returns |  | 2d | 2020-10-07 | 2020-10-08 | 43 | 0d | Accountant | 16h |
| 45 | 2.4 | Review and modify the business opportunity |  | 1d | 2020-10-09 | 2020-10-09 | 44 | 0d |  |  |
| 46 | 2.5 | Confirm decision to proceed | milestone | 0d | 2020-10-09 | 2020-10-09 | 45 | 0d | Business Advisor; Peers; Lawyer; Accountant |  |
| 47 | 3 | **Phase 3 - Plan for Action** |  | 21d | 2020-10-12 | 2020-11-09 |  | 0d |  | 184h |
| 48 | 3.1 | **Develop Detailed 5-Year Business Plan** |  | 21d | 2020-10-12 | 2020-11-09 |  | 0d |  | 184h |
| 49 | 3.1.1 | Describe the vision and opportunity |  | 1d | 2020-10-12 | 2020-10-12 | 46 | 0d | Business Advisor | 8h |
| 50 | 3.1.2 | List assumptions |  | 1d | 2020-10-13 | 2020-10-13 | 49 | 0d | Business Advisor | 8h |
| 51 | 3.1.3 | Describe the market |  | 1d | 2020-10-14 | 2020-10-14 | 50 | 0d | Business Advisor | 8h |
| 52 | 3.1.4 | Describe the new business |  | 1d | 2020-10-15 | 2020-10-15 | 51 | 0d | Business Advisor | 8h |
| 53 | 3.1.5 | Describe strengths, weaknesses, assets and threats |  | 1d | 2020-10-16 | 2020-10-16 | 52 | 0d | Business Advisor | 8h |
| 54 | 3.1.6 | Estimate sales volume during startup period |  | 1d | 2020-10-19 | 2020-10-19 | 53 | 0d | Business Advisor; Accountant | 16h |
| 55 | 3.1.7 | Forecast operating costs |  | 1d | 2020-10-20 | 2020-10-20 | 54 | 0d | Business Advisor; Accountant | 16h |
| 56 | 3.1.8 | Establish pricing strategy |  | 1d | 2020-10-21 | 2020-10-21 | 55 | 0d | Business Advisor | 8h |
| 57 | 3.1.9 | Forecast revenue |  | 1d | 2020-10-22 | 2020-10-22 | 56 | 0d | Business Advisor | 8h |
| 58 | 3.1.10 | Summarize pro-forma financial statement |  | 2d | 2020-10-23 | 2020-10-26 | 57 | 0d | Business Advisor | 16h |
| 59 | 3.1.11 | Develop break-even analysis |  | 1d | 2020-10-27 | 2020-10-27 | 58 | 0d | Business Advisor | 8h |
| 60 | 3.1.12 | Develop cash-flow projection |  | 1d | 2020-10-28 | 2020-10-28 | 59 | 0d | Business Advisor | 8h |
| 61 | 3.1.13 | Identify licensing and permitting requirements |  | 1d | 2020-10-29 | 2020-10-29 | 60 | 0d | Business Advisor | 8h |
| 62 | 3.1.14 | Develop startup plan |  | 2d | 2020-10-30 | 2020-11-02 | 61 | 0d | Business Advisor | 16h |
| 63 | 3.1.15 | Develop sales and marketing strategy |  | 1d | 2020-11-03 | 2020-11-03 | 62 | 0d | Business Advisor | 8h |
| 64 | 3.1.16 | Develop distribution structure |  | 1d | 2020-11-04 | 2020-11-04 | 63 | 0d | Business Advisor | 8h |
| 65 | 3.1.17 | Describe risks and opportunities |  | 2d | 2020-11-05 | 2020-11-06 | 64 | 0d | Business Advisor | 16h |
| 66 | 3.1.18 | Publish the business plan |  | 1d | 2020-11-09 | 2020-11-09 | 65 | 0d | Business Advisor | 8h |
| 67 | 3.1.19 | Confirm decision to proceed | milestone | 0d | 2020-11-09 | 2020-11-09 | 66 | 0d | Business Advisor |  |

| ID | WBS | Task | Type | Duration | Start | Finish | Predecessors | Total slack | Free slack | Resources | Work |
| --- | --- | --- | --- | --- | --- | --- | --- | --- | --- | --- | --- |
| 68 | 4 | **Phase 4 - Proceed With Startup Plan** |  | 53d | 2020-11-10 | 2021-01-21 |  | 0d |  |  | 736h |
| 69 | 4.1 | Choose a location |  | 1d | 2020-11-10 | 2020-11-10 | 67 | 0d |  |  |  |
| 70 | 4.2 | **Establish Business Structure** |  | 24d | 2020-11-11 | 2020-12-14 |  | 0d |  |  | 296h |
| 71 | 4.2.1 | **Choose a Name** |  | 2d | 2020-11-11 | 2020-11-12 |  | 0d |  |  | 16h |
| 72 | 4.2.1.1 | Identify implications |  | 1d | 2020-11-11 | 2020-11-11 | 69 | 0d |  | Lawyer | 8h |
| 73 | 4.2.1.2 | Research name availability |  | 1d | 2020-11-12 | 2020-11-12 | 72 | 0d |  | Lawyer | 8h |
| 74 | 4.2.2 | **Choose a Bank** |  | 5d | 2020-11-13 | 2020-11-19 |  | 0d |  |  | 40h |
| 75 | 4.2.2.1 | Establish accounts |  | 4d | 2020-11-13 | 2020-11-18 | 73 | 0d |  | Banker | 32h |
| 76 | 4.2.2.2 | Establish line of credit |  | 1d | 2020-11-19 | 2020-11-19 | 75 | 0d |  | Banker | 8h |
| 77 | 4.2.3 | Choose legal representation |  | 1d | 2020-11-20 | 2020-11-20 | 75SS, 76 | 0d |  | Lawyer | 8h |
| 78 | 4.2.4 | Select business tax-basis category |  | 2d | 2020-11-23 | 2020-11-24 | 77 | 0d |  | Lawyer; Accountant | 32h |
| 79 | 4.2.5 | Choose capital funding source |  | 2d | 2020-11-25 | 2020-11-26 | 78 | 0d |  | Manager | 16h |
| 80 | 4.2.6 | Commit capital funding | milestone | 0d | 2020-11-26 | 2020-11-26 | 79 | 13d | 0d | Manager |  |
| 81 | 4.2.7 | **Establish the Operating Control Base** |  | 12d | 2020-11-27 | 2020-12-14 |  | 13d | 0d |  | 144h |
| 82 | 4.2.7.1 | Choose and set up the accounting system |  | 2d | 2020-11-27 | 2020-11-30 | 79, 80 | 13d | 0d | Accountant | 16h |
| 83 | 4.2.7.2 | Obtain required licenses and permits |  | 4d | 2020-12-01 | 2020-12-04 | 82 | 13d | 0d | Lawyer; Government Agency | 64h |
| 84 | 4.2.7.3 | Obtain needed insurance |  | 4d | 2020-12-07 | 2020-12-10 | 83 | 13d | 0d | Accountant | 32h |
| 85 | 4.2.7.4 | Establish security plan |  | 2d | 2020-12-11 | 2020-12-14 | 84 | 13d | 0d | Business Advisor; Lawyer | 32h |
| 86 | 4.2.8 | **Develop Marketing Program** |  | 4d | 2020-11-12 | 2020-11-17 |  | 32d | 0d |  | 40h |
| 87 | 4.2.8.1 | Establish an advertising program |  | 2d | 2020-11-12 | 2020-11-13 | 73SS | 32d | 0d | Business Advisor | 16h |
| 88 | 4.2.8.2 | Develop a logo |  | 1d | 2020-11-16 | 2020-11-16 | 87 | 32d | 0d | Business Advisor; Lawyer | 16h |
| 89 | 4.2.8.3 | Order promotional materials |  | 1d | 2020-11-17 | 2020-11-17 | 88 | 32d | 0d | Business Advisor | 8h |
| 90 | 4.3 | **Provide Physical Facilities** |  | 15d | 2020-12-15 | 2021-01-04 |  | 13d | 0d |  | 120h |
| 91 | 4.3.1 | Secure operation space |  | 5d | 2020-12-15 | 2020-12-21 | 85, 89 | 13d | 0d | Lawyer | 40h |
| 92 | 4.3.2 | Select computer network hardware |  | 1d | 2020-12-22 | 2020-12-22 | 91 | 13d | 0d | Information Services | 8h |
| 93 | 4.3.3 | Select computer software |  | 1d | 2020-12-23 | 2020-12-23 | 92 | 13d | 0d | Information Services | 8h |
| 94 | 4.3.4 | Establish utilities |  | 3d | 2020-12-24 | 2020-12-28 | 93 | 13d | 0d | Manager | 24h |
| 95 | 4.3.5 | Provide furniture and equipment |  | 4d | 2020-12-29 | 2021-01-01 | 94 | 13d | 0d | Manager | 32h |
| 96 | 4.3.6 | Move in |  | 1d | 2021-01-04 | 2021-01-04 | 95 | 13d | 0d | Manager | 8h |

| ID | WBS | Task | Type | Duration | Start | Finish | Predecessors | Total slack | Resources | Work |
| --- | --- | --- | --- | --- | --- | --- | --- | --- | --- | --- |
| 97 | 4.4 | **Provide Staffing** |  | 40d | 2020-11-27 | 2021-01-21 |  | 0d |  | 320h |
| 98 | 4.4.1 | Interview and test candidates |  | 14d | 2020-11-27 | 2020-12-16 | 79 | 0d | Manager | 112h |
| 99 | 4.4.2 | Hire staff |  | 10d | 2020-12-17 | 2020-12-30 | 98 | 0d | Manager | 80h |
| 100 | 4.4.3 | Train staff |  | 16d | 2020-12-31 | 2021-01-21 | 99 | 0d | Manager | 128h |
| 101 | 4.5 | Start up the business | milestone | 0d | 2021-01-21 | 2021-01-21 | 96, 100 | 0d | Manager |  |
